# Menta 0.3 research

Schedule from GanttProject, 2012-01-16 to 2012-01-16.
Research project to automate the incident handling.

## Calendars

- Project calendar: Mon-Fri working; Sat-Sun off.

## Resources

| Resource | Group |
| --- | --- |
| Max | Architect |
| Alex | Team lead |
| Adel | Developer |
| Bulat | Developer |
| Renat | Developer |
| Artem | Developer |

## Schedule

| ID | WBS | Task | Duration | Start | Finish |
| --- | --- | --- | --- | --- | --- |
| 1 | 1 | **Analysis** | 1d | 2012-01-16 | 2012-01-16 |
| 2 | 1.1 | Incidents analysis | 1d | 2012-01-16 | 2012-01-16 |
